# Cronograma SISPPAFUT

Schedule from MS Project, 2012-03-19 to 2012-11-29, A marks actual dates.

## Calendars

- Calendario SISPPAFUT: Mon-Fri 09:00-13:00, 15:00-19:00; Sat-Sun off. Exceptions (off unless hours are given): 2012-03-21 to 2012-12-07 (recurring), 2012-05-07 to 2012-05-11, 2012-07-02 to 2012-08-17, 2012-10-08 to 2012-10-12.

## Resources

| Resource |
| --- |
| Michael Martínez |
| Rodolfo Cordero |
| Analista QA |
| Renzo Martínez |

## Schedule

| ID | WBS | Task | Duration | Start | Finish | Predecessors | Complete | Remaining | Total slack | Free slack | Constraint | Resources | Work | Actual work |
| --- | --- | --- | --- | --- | --- | --- | --- | --- | --- | --- | --- | --- | --- | --- |
| 1 | 1 | **Sistema Inteligente para Pronósticos de Partidos de Fútbol** | 84d | 2012-03-19 A | 2012-11-29 |  | 2% | 82.05d | 0d |  |  |  | 1008h | 15.2h |
| 2 | 1.1 | **Planificación** | 1d | 2012-03-19 A | 2012-03-19 A |  | 100% |  |  |  |  |  | 8h | 8h |
| 3 | 1.1.1 | Elaboraración del Glosario | 1d | 2012-03-19 A | 2012-03-19 A |  | 100% |  |  |  |  | Michael Martínez | 8h | 8h |
| 4 | 1.2 | **Product Backlog** | 0.6d | 2012-03-20 A | 2012-03-20 A |  | 100% |  |  |  |  |  | 4.8h | 4.8h |
| 5 | 1.2.1 | Creación de User Stories | 0.5d | 2012-03-20 A | 2012-03-20 A | 3 | 100% |  |  |  | start no earlier than 2012-03-20 | Michael Martínez | 4h | 4h |
| 6 | 1.2.2 | Priorización de User Stories | 0.1d | 2012-03-20 A | 2012-03-20 A | 5 | 100% |  |  |  | start no earlier than 2012-03-20 | Michael Martínez | 0.8h | 0.8h |
| 7 | 1.3 | **Planificación de los Sprints** | 0.4d | 2012-03-20 A | 2012-03-20 |  | 75% | 0.1d | 49d |  |  |  | 3.2h | 2.4h |
| 8 | 1.3.1 | Determinar Sprints | 0.1d | 2012-03-20 A | 2012-03-20 A | 6 | 100% |  |  |  |  | Michael Martínez | 0.8h | 0.8h |
| 9 | 1.3.2 | Determinar los Sprints Backlog | 0.1d | 2012-03-20 A | 2012-03-20 A | 8 | 100% |  |  |  | start no earlier than 2012-03-20 | Michael Martínez | 0.8h | 0.8h |
| 10 | 1.3.3 | Determinar duración de cada Sprint | 0.1d | 2012-03-20 A | 2012-03-20 A | 9 | 100% |  |  |  |  | Michael Martínez | 0.8h | 0.8h |
| 11 | 1.3.4 | Determinar Releases | 0.1d | 2012-03-20 | 2012-03-20 | 10 |  |  | 49d | 1d |  | Michael Martínez | 0.8h |  |
| 12 | 1.4 | **Construcción** | 33d | 2012-03-26 | 2012-06-14 |  |  |  | 48d |  |  |  | 616h |  |
| 13 | 1.4.1 | **Sprint 1** | 11d | 2012-03-26 | 2012-04-17 |  |  |  | 48d |  |  |  | 264h |  |
| 14 | 1.4.1.1 | US001 | 1d | 2012-03-26 | 2012-03-26 | 11 |  |  | 48d | 0d | start no earlier than 2012-03-26 | Michael Martínez; Rodolfo Cordero; Renzo Martínez | 24h |  |
| 15 | 1.4.1.2 | US004 | 2d | 2012-03-27 | 2012-03-29 | 14 |  |  | 48d | 0d |  | Michael Martínez; Rodolfo Cordero; Renzo Martínez | 48h |  |
| 16 | 1.4.1.3 | US007 | 2d | 2012-04-02 | 2012-04-03 | 15 |  |  | 48d | 0d |  | Michael Martínez; Rodolfo Cordero; Renzo Martínez | 48h |  |
| 17 | 1.4.1.4 | US009 | 2d | 2012-04-05 | 2012-04-09 | 16 |  |  | 48d | 0d |  | Michael Martínez; Rodolfo Cordero; Renzo Martínez | 48h |  |
| 18 | 1.4.1.5 | US014 | 2d | 2012-04-10 | 2012-04-12 | 17 |  |  | 48d | 0d |  | Michael Martínez; Rodolfo Cordero; Renzo Martínez | 48h |  |
| 19 | 1.4.1.6 | US017 | 2d | 2012-04-16 | 2012-04-17 | 18 |  |  | 48d | 0d |  | Michael Martínez; Rodolfo Cordero; Renzo Martínez | 48h |  |
| 20 | 1.4.2 | **Sprint 2** | 11d | 2012-04-19 | 2012-05-21 |  |  |  | 48d |  |  |  | 264h |  |
| 21 | 1.4.2.1 | US020 | 2d | 2012-04-19 | 2012-04-23 | 19 |  |  | 48d | 0d |  | Michael Martínez; Rodolfo Cordero; Renzo Martínez | 48h |  |
| 22 | 1.4.2.2 | US015 | 1d | 2012-04-24 | 2012-04-24 | 21 |  |  | 48d | 0d |  | Michael Martínez; Rodolfo Cordero; Renzo Martínez | 24h |  |
| 23 | 1.4.2.3 | US018 | 2d | 2012-04-26 | 2012-04-30 | 22 |  |  | 48d | 0d |  | Michael Martínez; Rodolfo Cordero; Renzo Martínez | 48h |  |
| 24 | 1.4.2.4 | US011 | 2d | 2012-05-01 | 2012-05-03 | 23 |  |  | 48d | 0d |  | Michael Martínez; Rodolfo Cordero; Renzo Martínez | 48h |  |
| 25 | 1.4.2.5 | US026 | 2d | 2012-05-14 | 2012-05-15 | 24 |  |  | 48d | 0d |  | Michael Martínez; Rodolfo Cordero; Renzo Martínez | 48h |  |
| 26 | 1.4.2.6 | US002 | 1d | 2012-05-17 | 2012-05-17 | 25 |  |  | 48d | 0d |  | Michael Martínez; Rodolfo Cordero; Renzo Martínez | 24h |  |
| 27 | 1.4.2.7 | US005 | 1d | 2012-05-21 | 2012-05-21 | 26 |  |  | 48d | 0d |  | Michael Martínez; Rodolfo Cordero; Renzo Martínez | 24h |  |

| ID | WBS | Task | Duration | Start | Finish | Predecessors | Total slack | Free slack | Constraint | Resources | Work |
| --- | --- | --- | --- | --- | --- | --- | --- | --- | --- | --- | --- |
| 28 | 1.4.3 | **Sprint 3** | 11d | 2012-05-22 | 2012-06-14 |  | 48d |  |  |  | 88h |
| 29 | 1.4.3.1 | US010 | 2.5d | 2012-05-22 | 2012-05-28 | 27 | 48d | 0d |  | Michael Martínez | 20h |
| 30 | 1.4.3.2 | US028 | 2.5d | 2012-05-28 | 2012-05-31 | 29 | 48d | 0d |  | Michael Martínez | 20h |
| 31 | 1.4.3.3 | US029 | 2.5d | 2012-06-04 | 2012-06-07 | 30 | 48d | 0d |  | Michael Martínez | 20h |
| 32 | 1.4.3.4 | US030 | 2.5d | 2012-06-07 | 2012-06-12 | 31 | 48d | 0d |  | Michael Martínez | 20h |
| 33 | 1.4.3.5 | US008 | 1d | 2012-06-14 | 2012-06-14 | 32 | 48d |  |  | Michael Martínez | 8h |
| 34 | 1.5 | **Diseño de la Red Neuronal** | 2d | 2012-06-18 | 2012-06-19 |  | 1d |  |  |  | 16h |
| 35 | 1.5.1 | Análisis de las características | 0.5d | 2012-06-18 | 2012-06-18 |  | 1d | 0d | start no earlier than 2012-06-18 | Michael Martínez | 4h |
| 36 | 1.5.2 | Análisis de los patrones | 0.5d | 2012-06-18 | 2012-06-18 | 35 | 1d | 0d |  | Michael Martínez | 4h |
| 37 | 1.5.3 | Diseño de la RNA | 1d | 2012-06-19 | 2012-06-19 | 36 | 1d | 0d |  | Michael Martínez | 8h |
| 38 | 1.6 | Lanzamiento de Release 1 | 1d | 2012-06-21 | 2012-06-21 | 37 | 1d | 0d |  | Michael Martínez | 8h |
| 39 | 1.7 | Cierre parcial del Producto | 1d | 2012-06-25 | 2012-06-25 | 38 | 1d | 0d |  | Michael Martínez | 8h |
| 40 | 1.8 | Presentación Parcial del Taller de Proyecto 1 | 1d | 2012-06-26 | 2012-06-26 | 39 | 1d |  |  | Michael Martínez | 8h |
| 41 | 1.9 | **Contrucción** | 27d | 2012-08-20 | 2012-10-25 |  | 0d |  |  |  | 216h |
| 42 | 1.9.1 | Sprint 4 | 9d | 2012-08-20 | 2012-09-06 | 40 | 0d |  | start no earlier than 2012-08-20 | Michael Martínez | 72h |
| 43 | 1.9.2 | Sprint 5 | 9d | 2012-09-10 | 2012-09-27 | 42 | 0d |  |  | Michael Martínez | 72h |
| 44 | 1.9.3 | Sprint 6 | 9d | 2012-10-01 | 2012-10-25 | 43 | 0d |  |  | Michael Martínez | 72h |
| 45 | 1.10 | **Entrenamiento** | 11d | 2012-10-29 | 2012-11-20 |  | 0d |  |  |  | 88h |
| 46 | 1.10.1 | Implementación del módulo de entrenamiento | 2d | 2012-10-29 | 2012-10-30 | 44 | 0d |  |  | Michael Martínez | 16h |
| 47 | 1.10.2 | Entrenamiento del Sistema | 9d | 2012-11-01 | 2012-11-20 | 46 | 0d |  |  | Michael Martínez | 72h |
| 48 | 1.11 | **Pruebas de Sistemas Expertos** | 1d | 2012-11-22 | 2012-11-22 |  | 0d |  |  |  | 8h |
| 49 | 1.11.1 | Validación y verificación de Sistemas Expertos | 1d | 2012-11-22 | 2012-11-22 | 47 | 0d |  |  | Michael Martínez | 8h |
| 50 | 1.12 | Lanzamiento de Release 2 | 1d | 2012-11-26 | 2012-11-26 | 49 | 0d |  |  | Michael Martínez | 8h |
| 51 | 1.13 | Cierre final del Producto | 1d | 2012-11-27 | 2012-11-27 | 50 | 0d |  |  | Michael Martínez | 8h |
| 52 | 1.14 | Presentación Final del Taller de Proyecto 2 | 1d | 2012-11-29 | 2012-11-29 | 51 | 0d |  |  | Michael Martínez | 8h |
